# Cronograma

Schedule from MS Project, 2024-10-02 to 2024-12-11, status date 2024-12-06, costs in €, A marks actual dates.

## Calendars

- Calendario - Sevilla: Mon-Fri 09:00-13:00, 15:00-19:00; Sat-Sun off. Exceptions (off unless hours are given): 2024-11-01 (Festividad Todos los Santos).

## Resources

| Resource | Rate | Cost per use |
| --- | --- | --- |
| Jefe de Proyecto | 41.5 |  |
| Diseñador UI/UX | 28.3 |  |
| QA Tester | 20.34 |  |
| Documentos de planificación |  |  |
| Portatil | 180 | 33 |
| Equipo de desarrollo | 202.5 |  |
| Oficial de Proyectos | 23.4 |  |

## Schedule

| ID | WBS | Task | Type | Duration | Start | Finish | Predecessors | Complete | Baseline start | Baseline finish | Baseline duration | Baseline 1 start | Baseline 1 finish | Resources | Work | Actual work | Cost | Baseline cost | Actual cost |
| --- | --- | --- | --- | --- | --- | --- | --- | --- | --- | --- | --- | --- | --- | --- | --- | --- | --- | --- | --- |
| 1 | 1 | **Proyecto** |  | 50d? | 2024-10-02 A | 2024-12-11 A |  | 100% | 2024-10-02 | 2024-12-11 | 50d? | 2024-10-02 | 2024-12-11 | Portatil [500%] | 158.5h | 158.5h | 19,528.54 | 19,528.54 | 19,528.54 |
| 2 | 1.1 | **Inicio** |  | 6d | 2024-10-02 A | 2024-10-09 A |  | 100% | 2024-10-02 | 2024-10-09 | 6d | 2024-10-02 | 2024-10-09 |  | 6h | 6h | 1,054 | 1,054 | 1,054 |
| 3 | 1.1.1 | **Documentos iniciales** |  | 6d | 2024-10-02 A | 2024-10-09 A |  | 100% | 2024-10-02 | 2024-10-09 | 6d | 2024-10-02 | 2024-10-09 |  | 6h | 6h | 1,054 | 1,054 | 1,054 |
| 4 | 1.1.1.1 | Reunión inicial | manual | 1d | 2024-10-02 A | 2024-10-02 A |  | 100% | 2024-10-02 | 2024-10-02 | 1d | 2024-10-02 | 2024-10-02 | Jefe de Proyecto | 1h | 1h | 41.5 | 41.5 | 41.5 |
| 5 | 1.1.1.2 | Documentos iniciales | manual | 5d | 2024-10-03 A | 2024-10-09 A | 4 | 100% | 2024-10-03 | 2024-10-09 | 5d | 2024-10-03 | 2024-10-09 | Equipo de desarrollo; Documentos de planificación [0.1%] | 5h | 5h | 1,012.5 | 1,012.5 | 1,012.5 |
| 6 | 1.2 | **Seguimiento** |  | 42d? | 2024-10-09 A | 2024-12-06 A |  | 100% | 2024-10-09 | 2024-12-06 | 42d? | 2024-10-09 | 2024-12-06 |  | 149h | 149h | 17,276.02 | 17,276.02 | 17,276.02 |
| 7 | 1.2.1 | **Planificación** |  | 25d? | 2024-10-09 A | 2024-11-13 A |  | 100% | 2024-10-09 | 2024-11-13 | 25d? | 2024-10-09 | 2024-11-13 |  | 23h | 23h | 538.2 | 538.2 | 538.2 |
| 8 | 1.2.1.1 | **Definición de requisitos** |  | 17d | 2024-10-09 A | 2024-11-03 A |  | 100% | 2024-10-09 | 2024-11-03 | 17d | 2024-10-09 | 2024-11-03 |  | 10h | 10h | 234 | 234 | 234 |
| 9 | 1.2.1.1.1 | Planificación de los riesgos y de la calidad | manual | 6d | 2024-10-23 A | 2024-10-30 A |  | 100% | 2024-10-23 | 2024-10-30 | 6d | 2024-10-23 | 2024-10-30 | Documentos de planificación [0.1%]; Oficial de Proyectos | 4h | 4h | 93.6 | 93.6 | 93.6 |
| 10 | 1.2.1.1.2 | Planificación de comunicaciones | manual | 6d | 2024-10-09 A | 2024-10-16 A |  | 100% | 2024-10-09 | 2024-10-16 | 6d | 2024-10-09 | 2024-10-16 | Documentos de planificación [0.1%]; Oficial de Proyectos | 3h | 3h | 70.2 | 70.2 | 70.2 |
| 11 | 1.2.1.1.3 | Planificación del alcance | manual | 6d | 2024-10-16 A | 2024-10-23 A |  | 100% | 2024-10-16 | 2024-10-23 | 6d | 2024-10-16 | 2024-10-23 | Documentos de planificación [0.1%]; Oficial de Proyectos | 3h | 3h | 70.2 | 70.2 | 70.2 |
| 12 | 1.2.1.1.4 | Requisitos | milestone, manual | 0d | 2024-11-03 A | 2024-11-03 A |  | 100% | 2024-11-03 | 2024-11-03 | 0d | 2024-11-03 | 2024-11-03 |  |  |  |  |  |  |
| 13 | 1.2.1.2 | **Gestión inicial del proyecto** |  | 10d | 2024-10-23 A | 2024-11-06 A |  | 100% | 2024-10-23 | 2024-11-06 | 10d | 2024-10-23 | 2024-11-06 |  | 7h | 7h | 163.8 | 163.8 | 163.8 |
| 14 | 1.2.1.2.1 | Planificación de los recursos y los costes | manual | 5d | 2024-10-30 A | 2024-11-06 A |  | 100% | 2024-10-30 | 2024-11-06 | 5d | 2024-10-30 | 2024-11-06 | Documentos de planificación [0.1%]; Oficial de Proyectos | 3h | 3h | 70.2 | 70.2 | 70.2 |
| 15 | 1.2.1.2.2 | Planificación de las adquisiciones | manual | 5d | 2024-10-30 A | 2024-11-06 A |  | 100% | 2024-10-30 | 2024-11-06 | 5d | 2024-10-30 | 2024-11-06 | Documentos de planificación [0.1%]; Oficial de Proyectos | 2h | 2h | 46.8 | 46.8 | 46.8 |
| 16 | 1.2.1.2.3 | Planificación del cronograma | manual | 10d | 2024-10-23 A | 2024-11-06 A |  | 100% | 2024-10-23 | 2024-11-06 | 10d | 2024-10-23 | 2024-11-06 | Documentos de planificación [0.1%]; Oficial de Proyectos | 2h | 2h | 46.8 | 46.8 | 46.8 |
| 17 | 1.2.1.2.4 | Capacitación | milestone, manual | 0d | 2024-11-06 A | 2024-11-06 A |  | 100% | 2024-11-06 | 2024-11-06 | 0d | 2024-11-06 | 2024-11-06 |  |  |  |  |  |  |
| 18 | 1.2.1.3 | **Diseño de la estructura** |  | 6d | 2024-11-06 A | 2024-11-13 A |  | 100% | 2024-11-06 | 2024-11-13 | 6d | 2024-11-06 | 2024-11-13 |  | 6h | 6h | 140.4 | 140.4 | 140.4 |
| 19 | 1.2.1.3.1 | Planificación de los cambios | manual | 6d | 2024-11-06 A | 2024-11-13 A |  | 100% | 2024-11-06 | 2024-11-13 | 6d | 2024-11-06 | 2024-11-13 | Documentos de planificación [0.1%]; Oficial de Proyectos | 2h | 2h | 46.8 | 46.8 | 46.8 |
| 20 | 1.2.1.3.2 | Planificación de la configuración | manual | 6d | 2024-11-06 A | 2024-11-13 A |  | 100% | 2024-11-06 | 2024-11-13 | 6d | 2024-11-06 | 2024-11-13 | Documentos de planificación [0.1%]; Oficial de Proyectos | 2h | 2h | 46.8 | 46.8 | 46.8 |
| 21 | 1.2.1.3.3 | Planificación de la integración | manual | 6d | 2024-11-06 A | 2024-11-13 A |  | 100% | 2024-11-06 | 2024-11-13 | 6d | 2024-11-06 | 2024-11-13 | Documentos de planificación [0.1%]; Oficial de Proyectos | 2h | 2h | 46.8 | 46.8 | 46.8 |
| 22 | 1.2.2 | **Ejecución** |  | 21d | 2024-11-08 A | 2024-12-06 A |  | 100% | 2024-11-08 | 2024-12-06 | 21d | 2024-11-08 | 2024-12-06 |  | 126h | 126h | 16,737.82 | 16,737.82 | 16,737.82 |
| 23 | 1.2.2.1 | **Desarrollo de la Interfaz de Usuario y Experiencia** |  | 11d | 2024-11-08 A | 2024-11-23 A |  | 100% | 2024-11-08 | 2024-11-23 | 11d | 2024-11-08 | 2024-11-23 |  | 14h | 14h | 396.2 | 396.2 | 396.2 |
| 24 | 1.2.2.1.1 | Diseño de los wireframes | manual | 2d | 2024-11-08 A | 2024-11-11 A |  | 100% | 2024-11-08 | 2024-11-11 | 2d | 2024-11-08 | 2024-11-11 | Diseñador UI/UX | 6h | 6h | 169.8 | 169.8 | 169.8 |
| 25 | 1.2.2.1.2 | Diseño prototipado de la interfaz de usuario | manual | 2d | 2024-11-12 A | 2024-11-13 A |  | 100% | 2024-11-12 | 2024-11-13 | 2d | 2024-11-08 | 2024-11-12 | Diseñador UI/UX | 8h | 8h | 226.4 | 226.4 | 226.4 |
| 26 | 1.2.2.1.3 | Diseño del sistema | milestone, manual | 0d | 2024-11-23 A | 2024-11-23 A |  | 100% | 2024-11-23 | 2024-11-23 | 0d | 2024-11-23 | 2024-11-23 |  |  |  |  |  |  |

| ID | WBS | Task | Type | Duration | Start | Finish | Predecessors | Complete | Actual finish | Baseline start | Baseline finish | Baseline duration | Baseline 1 start | Baseline 1 finish | Resources | Work | Actual work | Cost | Baseline cost | Actual cost |
| --- | --- | --- | --- | --- | --- | --- | --- | --- | --- | --- | --- | --- | --- | --- | --- | --- | --- | --- | --- | --- |
| 27 | 1.2.2.2 | **Implementación de Funcionalidades Principales** |  | 11d | 2024-11-08 A | 2024-11-23 A |  | 100% |  | 2024-11-08 | 2024-11-23 | 11d | 2024-11-08 | 2024-11-23 |  | 48h | 48h | 8,111.4 | 8,111.4 | 8,111.4 |
| 28 | 1.2.2.2.1 | Programar el servidor y lógica de reserva (Backend) | manual | 4d | 2024-11-08 A | 2024-11-13 A |  | 100% |  | 2024-11-08 | 2024-11-13 | 4d | 2024-11-08 | 2024-11-13 | Equipo de desarrollo | 11h | 11h | 2,227.5 | 2,227.5 | 2,227.5 |
| 29 | 1.2.2.2.2 | Programar la interfaz de usuario (Frontend) | manual | 4d | 2024-11-08 A | 2024-11-13 A |  | 100% |  | 2024-11-08 | 2024-11-13 | 4d | 2024-11-08 | 2024-11-13 | Equipo de desarrollo; Portatil | 11h | 11h | 2,440.5 | 2,440.5 | 2,440.5 |
| 30 | 1.2.2.2.3 | Realización de pruebas unitarias | manual | 2d | 2024-11-14 A | 2024-11-15 A | 29, 28 | 100% |  | 2024-11-14 | 2024-11-15 | 2d | 2024-11-14 | 2024-11-15 | QA Tester | 10h | 10h | 203.4 | 203.4 | 203.4 |
| 31 | 1.2.2.2.4 | Implementación de restricciones de reserva | manual | 2d | 2024-11-18 A | 2024-11-19 A | 30 | 100% |  | 2024-11-18 | 2024-11-19 | 2d | 2024-11-18 | 2024-11-19 | Equipo de desarrollo | 8h | 8h | 1,620 | 1,620 | 1,620 |
| 32 | 1.2.2.2.5 | Implementación navegación por categorías y buscador eficiente | manual | 3d | 2024-11-18 A | 2024-11-20 A | 30 | 100% |  | 2024-11-18 | 2024-11-20 | 3d | 2024-11-18 | 2024-11-20 | Equipo de desarrollo | 8h | 8h | 1,620 | 1,620 | 1,620 |
| 33 | 1.2.2.2.6 | Desarrollo del sistema | milestone, manual | 0d | 2024-11-23 A | 2024-11-23 A |  | 100% |  | 2024-11-23 | 2024-11-23 | 0d | 2024-11-23 | 2024-11-23 |  |  |  |  |  |  |
| 34 | 1.2.2.3 | **Integración del sistema de pago** |  | 3d | 2024-11-14 A | 2024-11-17 |  | 100% | 2024-11-15 | 2024-11-14 | 2024-11-17 | 3d | 2024-11-16 | 2024-11-19 |  | 9h | 9h | 1,822.5 | 1,822.5 | 1,822.5 |
| 35 | 1.2.2.3.1 | Configuración de la pasarela de pago | manual | 2d | 2024-11-14 A | 2024-11-15 A |  | 100% |  | 2024-11-14 | 2024-11-15 | 2d | 2024-11-15 | 2024-11-18 | Equipo de desarrollo | 5h | 5h | 1,012.5 | 1,012.5 | 1,012.5 |
| 36 | 1.2.2.3.2 | Configuración webhook | manual | 1d | 2024-11-15 A | 2024-11-15 A |  | 100% |  | 2024-11-15 | 2024-11-15 | 1d | 2024-11-15 | 2024-11-19 | Equipo de desarrollo | 4h | 4h | 810 | 810 | 810 |
| 37 | 1.2.2.4 | **Notificaciones y Comunicación Interna** |  | 6d | 2024-11-19 A | 2024-11-26 A |  | 100% |  | 2024-11-19 | 2024-11-26 | 6d | 2024-11-19 | 2024-11-26 |  | 11h | 11h | 1,401.3 | 1,401.3 | 1,401.3 |
| 38 | 1.2.2.4.1 | Desarrollar la mensajería interna en el backend | manual | 3d | 2024-11-19 A | 2024-11-21 A |  | 100% |  | 2024-11-19 | 2024-11-21 | 3d | 2024-11-19 | 2024-11-21 | QA Tester; Equipo de desarrollo | 5h | 5h | 708.9 | 708.9 | 708.9 |
| 39 | 1.2.2.4.2 | Diseñar la mensajería interna | manual | 3d | 2024-11-19 A | 2024-11-21 A |  | 100% |  | 2024-11-19 | 2024-11-21 | 3d | 2024-11-19 | 2024-11-21 | Diseñador UI/UX | 3h | 3h | 84.9 | 84.9 | 84.9 |
| 40 | 1.2.2.4.3 | Programar envío de notificaciones por correo y en la plataforma | manual | 3d | 2024-11-22 A | 2024-11-26 A | 39 | 100% |  | 2024-11-22 | 2024-11-26 | 3d | 2024-11-22 | 2024-11-26 | Equipo de desarrollo | 3h | 3h | 607.5 | 607.5 | 607.5 |
| 41 | 1.2.2.5 | **Pruebas Exhaustivas** |  | 6d | 2024-11-22 A | 2024-11-29 A |  | 100% |  | 2024-11-22 | 2024-11-29 | 6d | 2024-11-22 | 2024-11-29 |  | 21h | 21h | 1,884.42 | 1,884.42 | 1,884.42 |
| 42 | 1.2.2.5.1 | Ejecutar pruebas funcionales de interfaz | manual | 2d | 2024-11-22 A | 2024-11-25 A |  | 100% |  | 2024-11-22 | 2024-11-25 | 2d | 2024-11-22 | 2024-11-26 | QA Tester | 5h | 5h | 101.7 | 101.7 | 101.7 |
| 43 | 1.2.2.5.2 | Realizar pruebas de carga | manual | 2d | 2024-11-22 A | 2024-11-25 A |  | 100% |  | 2024-11-22 | 2024-11-25 | 2d | 2024-11-22 | 2024-11-26 | QA Tester | 8h | 8h | 162.72 | 162.72 | 162.72 |
| 44 | 1.2.2.5.3 | Corregir errores de usabilidad detectado por las pruebas | manual | 3d | 2024-11-27 A | 2024-11-29 A |  | 100% |  | 2024-11-27 | 2024-11-29 | 3d | 2024-11-27 | 2024-11-29 | Equipo de desarrollo | 8h | 8h | 1,620 | 1,620 | 1,620 |
| 45 | 1.2.2.6 | **Capacitación y Preparación para el Lanzamiento** |  | 5d | 2024-11-25 A | 2024-12-02 A |  | 100% |  | 2024-11-25 | 2024-12-02 | 5d | 2024-11-25 | 2024-12-02 |  | 10h | 10h | 972.5 | 972.5 | 972.5 |
| 46 | 1.2.2.6.1 | Elaboración de manuales de usuario y documentación técnica | manual | 1d | 2024-11-27 A | 2024-11-27 A |  | 100% |  | 2024-11-27 | 2024-11-27 | 1d | 2024-11-27 | 2024-11-27 | Oficial de Proyectos | 3h | 3h | 70.2 | 70.2 | 70.2 |
| 47 | 1.2.2.6.2 | Organizar sesiones de capacitación para el personal clave de la inmobiliaria | manual | 2d | 2024-11-28 A | 2024-11-29 A | 46 | 100% |  | 2024-11-28 | 2024-11-29 | 2d | 2024-11-28 | 2024-12-02 | Equipo de desarrollo | 3h | 3h | 607.5 | 607.5 | 607.5 |
| 48 | 1.2.2.6.3 | Organizar soporte durante el periodo de familiarización | manual | 3d | 2024-11-28 A | 2024-12-02 A | 46 | 100% |  | 2024-11-28 | 2024-12-02 | 3d | 2024-11-28 | 2024-12-02 | Equipo de desarrollo; Jefe de Proyecto | 4h | 4h | 294.8 | 294.8 | 294.8 |
| 49 | 1.2.2.6.4 | Implementación | milestone, manual | 0d | 2024-11-25 A | 2024-11-25 A |  | 100% |  | 2024-11-25 | 2024-11-25 | 0d | 2024-11-25 | 2024-11-25 |  |  |  |  |  |  |
| 50 | 1.2.2.7 | **Despliegue Final y Soporte Inicial** |  | 5d | 2024-12-02 A | 2024-12-06 A |  | 100% |  | 2024-12-02 | 2024-12-06 | 5d | 2024-12-02 | 2024-12-06 |  | 13h | 13h | 2,149.5 | 2,149.5 | 2,149.5 |
| 51 | 1.2.2.7.1 | Proveer soporte técnico | manual | 3d | 2024-12-02 A | 2024-12-04 A |  | 100% |  | 2024-12-02 | 2024-12-04 | 3d | 2024-12-02 | 2024-12-04 | Equipo de desarrollo | 3h | 3h | 607.5 | 607.5 | 607.5 |
| 52 | 1.2.2.7.2 | Monitorear el funcionamiento inicial | manual | 3d | 2024-12-02 A | 2024-12-04 A |  | 100% |  | 2024-12-02 | 2024-12-04 | 3d | 2024-12-02 | 2024-12-04 | Equipo de desarrollo | 3h | 3h | 607.5 | 607.5 | 607.5 |
| 53 | 1.2.2.7.3 | Configurar el entorno de producción en la nube | manual | 2d | 2024-12-05 A | 2024-12-06 A | 51, 52 | 100% |  | 2024-12-05 | 2024-12-06 | 2d | 2024-12-05 | 2024-12-06 | Equipo de desarrollo | 4h | 4h | 810 | 810 | 810 |
| 54 | 1.2.2.7.4 | Elaborar el despliegue final | manual | 1d | 2024-12-04 A | 2024-12-04 A |  | 100% |  | 2024-12-04 | 2024-12-04 | 1d | 2024-12-04 | 2024-12-04 | Jefe de Proyecto | 3h | 3h | 124.5 | 124.5 | 124.5 |
| 55 | 1.2.2.7.5 | Cierre | milestone, manual | 0d | 2024-12-04 A | 2024-12-04 A |  | 100% |  | 2024-12-04 | 2024-12-04 | 0d | 2024-12-04 | 2024-12-04 |  |  |  |  |  |  |

| ID | WBS | Task | Type | Duration | Start | Finish | Complete | Actual start | Actual finish | Baseline start | Baseline finish | Baseline duration | Baseline 1 start | Baseline 1 finish | Resources | Work | Actual work | Cost | Baseline cost | Actual cost |
| --- | --- | --- | --- | --- | --- | --- | --- | --- | --- | --- | --- | --- | --- | --- | --- | --- | --- | --- | --- | --- |
| 56 | 1.3 | **Cierre** |  | 5d | 2024-12-05 A | 2024-12-11 A | 100% |  |  | 2024-12-05 | 2024-12-11 | 5d | 2024-12-05 | 2024-12-11 |  | 3.5h | 3.5h | 265.52 | 265.52 | 265.52 |
| 57 | 1.3.1 | **Documentos de cierre** |  | 2d | 2024-12-06 | 2024-12-09 | 100% | 2024-12-05 | 2024-12-08 | 2024-12-06 | 2024-12-09 | 2d | 2024-12-06 | 2024-12-09 |  | 2h | 2h | 46.8 | 46.8 | 46.8 |
| 58 | 1.3.1.1 | Realizar el Informe de cierre | manual | 3d | 2024-12-05 A | 2024-12-08 A | 100% |  |  | 2024-12-05 | 2024-12-08 | 3d | 2024-12-05 | 2024-12-08 | Documentos de planificación [0.1%]; Oficial de Proyectos | 1h | 1h | 23.4 | 23.4 | 23.4 |
| 59 | 1.3.1.2 | Realizar el informe que recoge las lecciones aprendidas | manual | 3d | 2024-12-05 A | 2024-12-08 A | 100% |  |  | 2024-12-05 | 2024-12-08 | 3d | 2024-12-05 | 2024-12-08 | Documentos de planificación [0.1%]; Oficial de Proyectos | 1h | 1h | 23.4 | 23.4 | 23.4 |
| 60 | 1.3.2 | **Cierre del proyecto** |  | 3d | 2024-12-09 A | 2024-12-11 A | 100% |  |  | 2024-12-09 | 2024-12-11 | 3d | 2024-12-09 | 2024-12-11 |  | 1.5h | 1.5h | 218.72 | 218.72 | 218.72 |
| 61 | 1.3.2.1 | Delegación del mantenimiento del proyecto | manual | 2d | 2024-12-09 A | 2024-12-10 A | 100% |  |  | 2024-12-09 | 2024-12-10 | 2d | 2024-12-09 | 2024-12-10 | Equipo de desarrollo | 1h | 1h | 202.5 | 202.5 | 202.5 |
| 62 | 1.3.2.2 | Elaborar una presentación del proyecto | manual | 1d | 2024-12-11 A | 2024-12-11 A | 100% |  |  | 2024-12-11 | 2024-12-11 | 1d | 2024-12-11 | 2024-12-11 | Oficial de Proyectos; Jefe de Proyecto | 0.5h | 0.5h | 16.23 | 16.23 | 16.23 |
